# Templator Development

Schedule from MS Project, 2014-01-10 to 2014-04-07, costs in $, A marks actual dates.

## Calendars

- Standard: Mon-Fri 08:00-12:00, 13:00-17:00; Sat-Sun off.

## Resources

| Resource | Rate |
| --- | --- |
| Elsi Nushaj | 100 |
| Mohamed Baig | 100 |

## Schedule

| ID | WBS | Task | Type | Duration | Start | Finish | Predecessors | Complete | Constraint | Resources | Work | Actual work | Cost | Actual cost |
| --- | --- | --- | --- | --- | --- | --- | --- | --- | --- | --- | --- | --- | --- | --- |
| 1 | 1 | **Implement Database** |  | 7d | 2014-01-10 A | 2014-01-20 A |  | 100% |  | Mohamed Baig | 56h | 56h | 5,600 | 5,600 |
| 2 | 1.1 | Create Template Table |  | 2d | 2014-01-10 A | 2014-01-13 A |  | 100% | start no earlier than 2014-01-10 |  |  |  |  |  |
| 3 | 1.2 | Create User Table |  | 2d | 2014-01-13 A | 2014-01-14 A |  | 100% | start no earlier than 2014-01-13 |  |  |  |  |  |
| 4 | 1.3 | Create Task Table |  | 2d | 2014-01-14 A | 2014-01-15 A |  | 100% | start no earlier than 2014-01-14 |  |  |  |  |  |
| 5 | 1.4 | Create Category Table |  | 2d | 2014-01-15 A | 2014-01-16 A |  | 100% | start no earlier than 2014-01-15 |  |  |  |  |  |
| 6 | 1.5 | Create Subcategory Table |  | 2d | 2014-01-16 A | 2014-01-17 A |  | 100% | start no earlier than 2014-01-16 |  |  |  |  |  |
| 7 | 1.6 | Revision |  | 2d | 2014-01-17 A | 2014-01-20 A |  | 100% | start no earlier than 2014-01-17 |  |  |  |  |  |
| 8 | 1.7 | Database Complete | milestone | 0d | 2014-01-20 A | 2014-01-20 A | 2, 3, 4, 5, 6, 7 | 100% | start no earlier than 2014-01-20 |  |  |  |  |  |
| 9 | 2 | Create Test Data |  | 2d | 2014-01-21 A | 2014-01-22 A | 8 | 100% | finish no earlier than 2014-01-22 | Elsi Nushaj | 16h | 16h | 1,600 | 1,600 |
| 10 | 3 | **Code Template Management** |  | 11d | 2014-01-22 A | 2014-02-05 A |  | 100% |  | Elsi Nushaj | 88h | 88h | 8,800 | 8,800 |
| 11 | 3.1 | Create Template |  | 2d | 2014-01-22 A | 2014-01-23 A |  | 100% | start no earlier than 2014-01-22 |  |  |  |  |  |
| 12 | 3.2 | Delete Template |  | 2d | 2014-01-23 A | 2014-01-24 A |  | 100% | start no earlier than 2014-01-23 |  |  |  |  |  |
| 13 | 3.3 | Update Template |  | 2d | 2014-01-24 A | 2014-01-27 A |  | 100% | start no earlier than 2014-01-24 |  |  |  |  |  |
| 14 | 3.4 | View Template |  | 2d | 2014-01-27 A | 2014-01-28 A |  | 100% | start no earlier than 2014-01-27 |  |  |  |  |  |
| 15 | 3.5 | Testing |  | 2d | 2014-01-29 A | 2014-01-30 A | 11, 12, 14, 13 | 100% | start no earlier than 2014-01-28 |  |  |  |  |  |
| 16 | 3.6 | Revision |  | 4d | 2014-01-31 A | 2014-02-05 A | 15 | 100% |  |  |  |  |  |  |
| 17 | 3.7 | Code Template Management Complete | milestone | 0d | 2014-02-05 A | 2014-02-05 A | 16 | 100% |  |  |  |  |  |  |
| 18 | 4 | **Code Task Management** |  | 23d | 2014-02-25 A | 2014-03-27 A |  | 100% |  | Mohamed Baig | 184h | 184h | 18,400 | 18,400 |
| 19 | 4.1 | Create Task |  | 4d | 2014-02-25 A | 2014-02-28 A | 11 | 100% | finish no earlier than 2014-02-28 |  |  |  |  |  |
| 20 | 4.2 | Delete Task |  | 4d | 2014-03-03 A | 2014-03-06 A |  | 100% | finish no earlier than 2014-03-06 |  |  |  |  |  |
| 21 | 4.3 | Update Task |  | 4d | 2014-03-05 A | 2014-03-10 A |  | 100% | finish no earlier than 2014-03-10 |  |  |  |  |  |
| 22 | 4.4 | View Task |  | 4d | 2014-03-07 A | 2014-03-12 A |  | 100% | finish no earlier than 2014-03-12 |  |  |  |  |  |
| 23 | 4.5 | Testing |  | 4d | 2014-03-18 A | 2014-03-21 A | 22, 19, 20, 21 | 100% | finish no earlier than 2014-03-21 |  |  |  |  |  |
| 24 | 4.6 | Revision |  | 4d | 2014-03-24 A | 2014-03-27 A | 23 | 100% | finish no earlier than 2014-03-25 |  |  |  |  |  |
| 25 | 4.7 | Code Task Management Complete | milestone | 0d | 2014-03-27 A | 2014-03-27 A | 24 | 100% | finish no earlier than 2014-03-27 |  |  |  |  |  |

| ID | WBS | Task | Type | Duration | Start | Finish | Predecessors | Complete | Constraint | Resources | Work | Actual work | Cost | Actual cost |
| --- | --- | --- | --- | --- | --- | --- | --- | --- | --- | --- | --- | --- | --- | --- |
| 26 | 5 | **Code Category Management** |  | 18d | 2014-01-27 A | 2014-02-19 A |  | 100% |  | Mohamed Baig | 144h | 144h | 14,400 | 14,400 |
| 27 | 5.1 | Create Category |  | 4d | 2014-01-27 A | 2014-01-30 A |  | 100% | start no earlier than 2014-01-27 |  |  |  |  |  |
| 28 | 5.2 | Delete Category |  | 4d | 2014-01-29 A | 2014-02-03 A |  | 100% | start no earlier than 2014-01-29 |  |  |  |  |  |
| 29 | 5.3 | Update Category |  | 4d | 2014-01-31 A | 2014-02-05 A |  | 100% | start no earlier than 2014-01-31 |  |  |  |  |  |
| 30 | 5.4 | View Category |  | 4d | 2014-02-04 A | 2014-02-07 A |  | 100% | start no earlier than 2014-02-04 |  |  |  |  |  |
| 31 | 5.5 | Testing |  | 4d | 2014-02-10 A | 2014-02-13 A | 30, 27, 28, 29 | 100% | start no earlier than 2014-02-06 |  |  |  |  |  |
| 32 | 5.6 | Revision |  | 4d | 2014-02-14 A | 2014-02-19 A | 31 | 100% |  |  |  |  |  |  |
| 33 | 5.7 | Code Category Management Complete | milestone | 0d | 2014-02-19 A | 2014-02-19 A | 32 | 100% |  |  |  |  |  |  |
| 34 | 6 | **Code Reuse Template** |  | 11d | 2014-02-20 A | 2014-03-06 A |  | 100% |  | Elsi Nushaj | 88h | 88h | 8,800 | 8,800 |
| 35 | 6.1 | Copy Template |  | 3d | 2014-02-20 A | 2014-02-24 A |  | 100% | start no earlier than 2014-02-20 |  |  |  |  |  |
| 36 | 6.2 | Testing |  | 4d | 2014-02-25 A | 2014-02-28 A | 35 | 100% |  |  |  |  |  |  |
| 37 | 6.3 | Revision |  | 4d | 2014-03-03 A | 2014-03-06 A | 36 | 100% |  |  |  |  |  |  |
| 38 | 6.4 | Code Reuse Template Complete | milestone | 0d | 2014-03-06 A | 2014-03-06 A | 37 | 100% |  |  |  |  |  |  |
| 39 | 7 | **Code User Management** |  | 15d | 2014-02-20 A | 2014-03-12 A |  | 100% |  | Mohamed Baig | 120h | 120h | 12,000 | 12,000 |
| 40 | 7.1 | Create User |  | 3d | 2014-02-20 A | 2014-02-24 A |  | 100% | start no earlier than 2014-02-20 |  |  |  |  |  |
| 41 | 7.2 | Update User |  | 3d | 2014-02-24 A | 2014-02-26 A |  | 100% | start no earlier than 2014-02-24 |  |  |  |  |  |
| 42 | 7.3 | View User |  | 3d | 2014-02-27 A | 2014-03-03 A |  | 100% | start no earlier than 2014-02-27 |  |  |  |  |  |
| 43 | 7.4 | Delete User |  | 2d | 2014-03-03 A | 2014-03-04 A |  | 100% | start no earlier than 2014-03-03 |  |  |  |  |  |
| 44 | 7.5 | Testing |  | 3d | 2014-03-05 A | 2014-03-07 A | 40, 41, 42, 43 | 100% |  |  |  |  |  |  |
| 45 | 7.6 | Revision |  | 3d | 2014-03-10 A | 2014-03-12 A | 44 | 100% |  |  |  |  |  |  |
| 46 | 7.7 | Code User Management Complete | milestone | 0d | 2014-03-12 A | 2014-03-12 A | 45 | 100% |  |  |  |  |  |  |
| 47 | 8 | **Code Milestone Manager** |  | 9d | 2014-03-07 A | 2014-03-19 A |  | 100% |  | Elsi Nushaj | 72h | 72h | 7,200 | 7,200 |
| 48 | 8.1 | Create Milestone |  | 2d | 2014-03-07 A | 2014-03-10 A |  | 100% | start no earlier than 2014-03-07 |  |  |  |  |  |
| 49 | 8.2 | Update Milestone |  | 2d | 2014-03-10 A | 2014-03-11 A |  | 100% | start no earlier than 2014-03-10 |  |  |  |  |  |
| 50 | 8.3 | Delete Milestone |  | 2d | 2014-03-11 A | 2014-03-12 A |  | 100% | start no earlier than 2014-03-11 |  |  |  |  |  |
| 51 | 8.4 | View Milestone |  | 2d | 2014-03-12 A | 2014-03-13 A |  | 100% | start no earlier than 2014-03-12 |  |  |  |  |  |
| 52 | 8.5 | Testing |  | 2d | 2014-03-14 A | 2014-03-17 A | 51, 48, 49, 50 | 100% |  |  |  |  |  |  |
| 53 | 8.6 | Revision |  | 2d | 2014-03-18 A | 2014-03-19 A | 52 | 100% |  |  |  |  |  |  |
| 54 | 8.7 | Code Milestone Manager Complete | milestone | 0d | 2014-03-19 A | 2014-03-19 A | 53 | 100% |  |  |  |  |  |  |

| ID | WBS | Task | Type | Duration | Start | Finish | Predecessors | Complete | Constraint | Resources | Work | Actual work | Cost | Actual cost |
| --- | --- | --- | --- | --- | --- | --- | --- | --- | --- | --- | --- | --- | --- | --- |
| 55 | 9 | **Code Download Template** |  | 6d | 2014-03-19 A | 2014-03-26 A |  | 100% |  | Elsi Nushaj | 48h | 48h | 4,800 | 4,800 |
| 56 | 9.1 | Download Template |  | 2d | 2014-03-19 A | 2014-03-20 A |  | 100% | start no earlier than 2014-03-19 |  |  |  |  |  |
| 57 | 9.2 | Testing |  | 2d | 2014-03-21 A | 2014-03-24 A | 56 | 100% |  |  |  |  |  |  |
| 58 | 9.3 | Revision |  | 2d | 2014-03-25 A | 2014-03-26 A | 57 | 100% |  |  |  |  |  |  |
| 59 | 9.4 | Code Download Template Complete | milestone | 0d | 2014-03-26 A | 2014-03-26 A | 58 | 100% |  |  |  |  |  |  |
| 60 | 10 | Test Template Importing |  | 8d | 2014-03-27 A | 2014-04-07 A | 59 | 100% |  | Mohamed Baig | 64h | 64h | 6,400 | 6,400 |
| 61 | 11 | Templator development complete | milestone | 0d | 2014-04-07 A | 2014-04-07 A | 60 | 100% |  |  |  |  |  |  |
